# WongWingYi-23022572D-Group Project

Schedule from MS Project, 2024-05-01 to 2024-10-31, costs in HK$.

## Calendars

- Standard: Mon-Fri 08:00-12:00, 13:00-17:00; Sat-Sun off.

## Resources

| Resource | Rate |
| --- | --- |
| Project Manager | 20 |
| Bobby | 30 |
| Ashok | 20 |
| Kim | 20 |
| Alfreda | 20 |
| Buying Website |  |
| Server | 2000 |
| Laptops | 3500 |
| Donation Services |  |
| Legal Consultant | 2500 |
| Travel Cost |  |
| Video Production |  |
| Event Funding | 1000 |
| Budget |  |
| Internet Access | 500 |
| Licensed Software | 70 |

## Schedule

| ID | WBS | Task | Type | Duration | Start | Finish | Predecessors | Baseline start | Baseline finish | Baseline duration | Total slack | Free slack | Resources | Work | Cost | Baseline cost |
| --- | --- | --- | --- | --- | --- | --- | --- | --- | --- | --- | --- | --- | --- | --- | --- | --- |
| 1 | 1 | **Initiating** |  | 7d | 2024-05-01 | 2024-05-09 |  | 2024-05-01 | 2024-05-09 | 7d | 0d |  |  | 80h | 13,890 | 13,890 |
| 2 | 1.1 | Stakeholder Identification |  | 1d | 2024-05-07 | 2024-05-07 | 3 | 2024-05-07 | 2024-05-07 | 1d | 10d | 0d | Alfreda | 8h | 160 | 160 |
| 3 | 1.2 | Project Charter |  | 2d | 2024-05-03 | 2024-05-06 | 8 | 2024-05-03 | 2024-05-06 | 2d | 10d | 0d | Project Manager | 16h | 320 | 320 |
| 4 | 1.3 | Project Scope |  | 2d | 2024-05-08 | 2024-05-09 | 2 | 2024-05-08 | 2024-05-09 | 2d | 10d | 0d | Project Manager | 16h | 320 | 320 |
| 5 | 1.4 | Kick-off meeting | milestone, manual | 1d | 2024-05-01 | 2024-05-01 |  | 2024-05-01 | 2024-05-01 | 1d |  |  | Alfreda; Ashok; Bobby; Kim; Project Manager; Laptops [300%]; Internet Access [300%]; Licensed Software [300%] | 40h | 13,090 | 13,090 |
| 6 | 2 | **Planning** |  | 29d | 2024-05-01 | 2024-06-10 |  | 2024-05-01 | 2024-06-10 | 29d | 0d |  | Licensed Software | 344h | 10,000 | 10,000 |
| 7 | 2.1 | Team planning meeting | milestone, manual | 1d | 2024-05-01 | 2024-05-01 |  | 2024-05-01 | 2024-05-01 | 1d |  |  |  |  |  |  |
| 8 | 2.2 | **Forming project team** |  | 2d | 2024-05-01 | 2024-05-02 |  | 2024-05-01 | 2024-05-02 | 2d | 10d | 0d | Alfreda; Ashok; Bobby; Kim; Project Manager | 80h | 1,760 | 1,760 |
| 9 | 2.2.1 | Identify team members |  | 1d | 2024-05-01 | 2024-05-01 | 7SS | 2024-05-01 | 2024-05-01 | 1d | 10d | 0d |  |  |  |  |
| 10 | 2.2.2 | Define role and responsibilities |  | 1d | 2024-05-01 | 2024-05-01 | 7SS | 2024-05-01 | 2024-05-01 | 1d | 10d | 0d |  |  |  |  |
| 11 | 2.2.3 | Create team charter |  | 1d | 2024-05-02 | 2024-05-02 | 9, 10 | 2024-05-02 | 2024-05-02 | 1d | 10d |  |  |  |  |  |
| 12 | 2.3 | Scope Statement |  | 2d | 2024-05-10 | 2024-05-13 | 4 | 2024-05-10 | 2024-05-13 | 2d | 10d | 0d | Project Manager | 16h | 320 | 320 |
| 13 | 2.4 | Work Breakdown Structure |  | 2d | 2024-05-14 | 2024-05-15 | 12 | 2024-05-14 | 2024-05-15 | 2d | 10d | 0d | Project Manager | 16h | 320 | 320 |
| 14 | 2.5 | **Developing project budget** |  | 3d | 2024-05-29 | 2024-05-31 |  | 2024-05-29 | 2024-05-31 | 3d | 16d |  |  | 24h | 480 | 480 |
| 15 | 2.5.1 | Define cost management plan |  | 1d | 2024-05-29 | 2024-05-29 | 13 | 2024-05-29 | 2024-05-29 | 1d | 18d |  | Project Manager | 8h | 160 | 160 |
| 16 | 2.5.2 | Estimate cost |  | 1d | 2024-05-30 | 2024-05-30 | 13 | 2024-05-30 | 2024-05-30 | 1d | 17d |  | Project Manager | 8h | 160 | 160 |
| 17 | 2.5.3 | Determine budget |  | 1d | 2024-05-31 | 2024-05-31 | 13 | 2024-05-31 | 2024-05-31 | 1d | 16d |  | Project Manager | 8h | 160 | 160 |
| 18 | 2.6 | **Developing project schedule** |  | 8d | 2024-05-17 | 2024-05-28 |  | 2024-05-17 | 2024-05-28 | 8d | 19d |  |  | 32h | 640 | 640 |
| 19 | 2.6.1 | Task resource allocation |  | 1d | 2024-05-17 | 2024-05-17 | 13 | 2024-05-17 | 2024-05-17 | 1d | 20d | 1d | Project Manager | 8h | 160 | 160 |
| 20 | 2.6.2 | Task duration estimation |  | 1d | 2024-05-20 | 2024-05-20 | 13 | 2024-05-20 | 2024-05-20 | 1d | 19d | 0d | Project Manager | 8h | 160 | 160 |
| 21 | 2.6.3 | Task dependency mapping |  | 1d | 2024-05-27 | 2024-05-27 | 19, 20 | 2024-05-27 | 2024-05-27 | 1d | 19d | 0d | Project Manager | 8h | 160 | 160 |
| 22 | 2.6.4 | Gantt chart creation |  | 1d | 2024-05-28 | 2024-05-28 | 19, 20, 21 | 2024-05-28 | 2024-05-28 | 1d | 19d |  | Project Manager | 8h | 160 | 160 |
| 23 | 2.7 | **Planning quality management** |  | 18d | 2024-05-16 | 2024-06-10 |  | 2024-05-16 | 2024-06-10 | 18d | 10d |  |  | 32h | 640 | 640 |
| 24 | 2.7.1 | Quality Planning |  | 1d | 2024-05-16 | 2024-05-16 | 13 | 2024-05-16 | 2024-05-16 | 1d | 10d | 0d | Project Manager | 8h | 160 | 160 |
| 25 | 2.7.2 | Quality assurance procedures |  | 2d | 2024-05-23 | 2024-05-24 | 24 | 2024-05-23 | 2024-05-24 | 2d | 10d | 0d | Project Manager | 16h | 320 | 320 |
| 26 | 2.7.3 | Quality control measurement |  | 1d | 2024-06-10 | 2024-06-10 | 25 | 2024-06-10 | 2024-06-10 | 1d | 10d |  | Project Manager | 8h | 160 | 160 |

| ID | WBS | Task | Type | Duration | Start | Finish | Predecessors | Baseline start | Baseline finish | Baseline duration | Total slack | Free slack | Resources | Work | Cost | Baseline cost |
| --- | --- | --- | --- | --- | --- | --- | --- | --- | --- | --- | --- | --- | --- | --- | --- | --- |
| 27 | 2.8 | **Planning risk management** |  | 13d | 2024-05-21 | 2024-06-06 |  | 2024-05-21 | 2024-06-06 | 13d | 12d |  |  | 40h | 800 | 800 |
| 28 | 2.8.1 | Risk identification |  | 1d | 2024-05-21 | 2024-05-21 | 13 | 2024-05-21 | 2024-05-21 | 1d | 12d | 0d | Project Manager | 8h | 160 | 160 |
| 29 | 2.8.2 | Risk Analysis |  | 2d | 2024-06-03 | 2024-06-04 | 28 | 2024-06-03 | 2024-06-04 | 2d | 14d |  | Project Manager | 16h | 320 | 320 |
| 30 | 2.8.3 | Risk mitigation |  | 2d | 2024-06-05 | 2024-06-06 | 28 | 2024-06-05 | 2024-06-06 | 2d | 12d |  | Project Manager | 16h | 320 | 320 |
| 31 | 2.9 | **Planning communication management** |  | 13d | 2024-05-22 | 2024-06-07 |  | 2024-05-22 | 2024-06-07 | 13d | 11d |  |  | 16h | 320 | 320 |
| 32 | 2.9.1 | Communication strategy |  | 1d | 2024-05-22 | 2024-05-22 | 13 | 2024-05-22 | 2024-05-22 | 1d | 12d | 0d | Project Manager | 8h | 160 | 160 |
| 33 | 2.9.2 | Communication scheduling |  | 1d | 2024-06-07 | 2024-06-07 | 32 | 2024-06-07 | 2024-06-07 | 1d | 11d |  | Project Manager | 8h | 160 | 160 |
| 34 | 2.10 | **Planning for multi-language support** |  | 2d | 2024-05-16 | 2024-05-17 |  | 2024-05-16 | 2024-05-17 | 2d | 26d |  |  | 16h | 320 | 320 |
| 35 | 2.10.1 | Identify language requirements |  | 1d | 2024-05-16 | 2024-05-16 | 13 | 2024-05-16 | 2024-05-16 | 1d | 26d | 0d | Kim | 8h | 160 | 160 |
| 36 | 2.10.2 | Plan for language implementation |  | 1d | 2024-05-17 | 2024-05-17 | 35 | 2024-05-17 | 2024-05-17 | 1d | 26d |  | Kim | 8h | 160 | 160 |
| 37 | 2.11 | **Planning for data privacy and compliance** |  | 5d | 2024-05-16 | 2024-05-22 |  | 2024-05-16 | 2024-05-22 | 5d | 23d | 0d |  | 16h | 2,980 | 2,980 |
| 38 | 2.11.1 | GDPR compliance planning |  | 3d | 2024-05-16 | 2024-05-20 | 13 | 2024-05-16 | 2024-05-20 | 3d | 23d | 0d | Legal Consultant |  | 2,500 | 2,500 |
| 39 | 2.11.2 | Data privacy impact assessment |  | 2d | 2024-05-21 | 2024-05-22 | 38 | 2024-05-21 | 2024-05-22 | 2d | 23d |  | Bobby | 16h | 480 | 480 |
| 40 | 2.12 | Planning for instructional videos |  | 5d | 2024-05-16 | 2024-05-22 | 13 | 2024-05-16 | 2024-05-22 | 5d | 23d |  | Alfreda; Licensed Software | 40h | 870 | 870 |
| 41 | 2.13 | **Planning for system testing** |  | 2d | 2024-05-16 | 2024-05-17 |  | 2024-05-16 | 2024-05-17 | 2d | 26d |  |  | 16h | 480 | 480 |
| 42 | 2.13.1 | Define System requirements |  | 1d | 2024-05-16 | 2024-05-16 | 13 | 2024-05-16 | 2024-05-16 | 1d | 26d | 0d | Bobby | 8h | 240 | 240 |
| 43 | 2.13.2 | Test Planning |  | 1d | 2024-05-17 | 2024-05-17 | 42 | 2024-05-17 | 2024-05-17 | 1d | 26d |  | Bobby | 8h | 240 | 240 |
| 44 | 3 | **Executing** |  | 68d | 2024-06-11 | 2024-09-12 |  | 2024-06-11 | 2024-09-12 | 68d | 10d | 0d |  | 1200h | 34,650 | 34,650 |
| 45 | 3.1 | **Website development** |  | 52d | 2024-06-11 | 2024-08-21 |  | 2024-06-11 | 2024-08-21 | 52d | 10d | 0d |  | 216h | 9,170 | 9,170 |
| 46 | 3.1.1 | User interface design |  | 10d | 2024-06-11 | 2024-06-24 | 6 | 2024-06-11 | 2024-06-24 | 10d | 10d | 0d | Alfreda; Licensed Software | 80h | 1,670 | 1,670 |
| 47 | 3.1.2 | **Buying website** |  | 21d | 2024-06-25 | 2024-07-23 |  | 2024-06-25 | 2024-07-23 | 21d | 10d | 0d |  | 8h | 3,160 | 3,160 |
| 48 | 3.1.2.1 | Submit UI design and requirements | milestone | 1d | 2024-06-25 | 2024-06-25 | 46 | 2024-06-25 | 2024-06-25 | 1d | 10d | 0d | Alfreda | 8h | 160 | 160 |
| 49 | 3.1.2.2 | Reserve time for development |  | 20d | 2024-06-26 | 2024-07-23 | 48 | 2024-06-26 | 2024-07-23 | 20d | 10d |  | Buying Website [0.1%] |  | 3,000 | 3,000 |
| 50 | 3.1.3 | **Customized functions implementation** |  | 32d | 2024-07-09 | 2024-08-21 |  | 2024-07-09 | 2024-08-21 | 32d | 10d |  |  | 128h | 4,340 | 4,340 |
| 51 | 3.1.3.1 | Frontend |  | 5d | 2024-07-24 | 2024-07-30 | 47 | 2024-07-24 | 2024-07-30 | 5d | 10d | 0d | Bobby | 40h | 1,200 | 1,200 |
| 52 | 3.1.3.2 | Database implementation |  | 5d | 2024-07-31 | 2024-08-06 | 61, 51 | 2024-07-31 | 2024-08-06 | 5d | 18d | 0d | Bobby | 40h | 1,200 | 1,200 |
| 53 | 3.1.3.3 | Payment |  | 10d | 2024-07-09 | 2024-07-22 | 61 | 2024-07-09 | 2024-07-22 | 10d | 29d | 11d | Donation Services [0.1%] |  | 500 | 500 |
| 54 | 3.1.3.4 | Digital Receipt |  | 3d | 2024-08-07 | 2024-08-09 | 53, 52 | 2024-08-07 | 2024-08-09 | 3d | 18d |  | Bobby | 24h | 720 | 720 |
| 55 | 3.1.3.5 | Multi-language support |  | 3d | 2024-08-19 | 2024-08-21 | 51 | 2024-08-19 | 2024-08-21 | 3d | 10d |  | Bobby | 24h | 720 | 720 |

| ID | WBS | Task | Type | Duration | Start | Finish | Predecessors | Baseline start | Baseline finish | Baseline duration | Total slack | Free slack | Resources | Work | Cost | Baseline cost |
| --- | --- | --- | --- | --- | --- | --- | --- | --- | --- | --- | --- | --- | --- | --- | --- | --- |
| 56 | 3.2 | **Template and guideline development** |  | 10d | 2024-06-11 | 2024-06-24 |  | 2024-06-11 | 2024-06-24 | 10d | 68d |  | Ashok | 80h | 1,600 | 1,600 |
| 57 | 3.2.1 | Template creation |  | 5d | 2024-06-11 | 2024-06-17 | 6 | 2024-06-11 | 2024-06-17 | 5d | 68d | 0d |  |  |  |  |
| 58 | 3.2.2 | Guideline documentation |  | 5d | 2024-06-18 | 2024-06-24 | 57 | 2024-06-18 | 2024-06-24 | 5d | 68d |  |  |  |  |  |
| 59 | 3.3 | **Instructional videos production** |  | 10d | 2024-08-22 | 2024-09-04 |  | 2024-08-22 | 2024-09-04 | 10d | 16d |  |  |  | 1,000 | 1,000 |
| 60 | 3.3.1 | Video creation for website |  | 10d | 2024-08-22 | 2024-09-04 | 45 | 2024-08-22 | 2024-09-04 | 10d | 16d |  | Video Production [0.1%] |  | 1,000 | 1,000 |
| 61 | 3.4 | **Database design and development** |  | 20d | 2024-06-11 | 2024-07-08 |  | 2024-06-11 | 2024-07-08 | 20d | 29d | 0d | Bobby; Server | 160h | 6,800 | 6,800 |
| 62 | 3.4.1 | Database design |  | 5d | 2024-06-11 | 2024-06-17 | 6 | 2024-06-11 | 2024-06-17 | 5d | 29d | 0d |  |  |  |  |
| 63 | 3.4.2 | Database implementation |  | 10d | 2024-06-18 | 2024-07-01 | 62 | 2024-06-18 | 2024-07-01 | 10d | 29d | 0d |  |  |  |  |
| 64 | 3.4.3 | Database testing and validation |  | 5d | 2024-07-02 | 2024-07-08 | 63 | 2024-07-02 | 2024-07-08 | 5d | 29d |  |  |  |  |  |
| 65 | 3.5 | **Organizing Shark Tank** |  | 10d | 2024-07-24 | 2024-08-06 |  | 2024-07-24 | 2024-08-06 | 10d | 37d |  |  | 320h | 6,400 | 6,400 |
| 66 | 3.5.1 | Planning for shark tank |  | 5d | 2024-07-24 | 2024-07-30 | 47 | 2024-07-24 | 2024-07-30 | 5d | 37d | 0d | Alfreda; Ashok; Kim; Project Manager | 160h | 3,200 | 3,200 |
| 67 | 3.5.2 | Communicate with organizations or college | milestone | 5d | 2024-07-31 | 2024-08-06 | 66 | 2024-07-31 | 2024-08-06 | 5d | 37d |  | Alfreda; Ashok; Kim; Project Manager | 160h | 3,200 | 3,200 |
| 68 | 3.6 | **System testing** |  | 11d | 2024-08-22 | 2024-09-05 |  | 2024-08-22 | 2024-09-05 | 11d | 10d | 0d |  | 224h | 5,280 | 5,280 |
| 69 | 3.6.1 | Test case design |  | 2d | 2024-08-22 | 2024-08-23 | 45, 61 | 2024-08-22 | 2024-08-23 | 2d | 10d | 0d | Project Manager; Bobby | 32h | 800 | 800 |
| 70 | 3.6.2 | Internal test case execution and control |  | 5d | 2024-08-26 | 2024-08-30 | 69 | 2024-08-26 | 2024-08-30 | 5d | 10d | 0d | Bobby | 40h | 1,200 | 1,200 |
| 71 | 3.6.3 | Test with shark tanks | milestone | 1d | 2024-09-02 | 2024-09-02 | 70 | 2024-09-02 | 2024-09-02 | 1d | 10d | 0d | Alfreda; Ashok; Kim; Project Manager | 32h | 640 | 640 |
| 72 | 3.6.4 | Test result documentation |  | 3d | 2024-09-03 | 2024-09-05 | 71 | 2024-09-03 | 2024-09-05 | 3d | 10d |  | Bobby; Project Manager; Alfreda; Ashok; Kim | 120h | 2,640 | 2,640 |
| 73 | 3.7 | System deployment |  | 5d | 2024-09-06 | 2024-09-12 | 68 | 2024-09-06 | 2024-09-12 | 5d | 10d |  | Alfreda; Ashok; Bobby; Kim; Project Manager | 200h | 4,400 | 4,400 |
| 74 | 4 | **Monitoring and Controlling** |  | 132d | 2024-05-01 | 2024-10-31 |  |  |  |  | 0d |  |  |  |  | -0 |
| 75 | 4.1 | Progrss report | manual | 132d | 2024-05-01 | 2024-10-31 |  |  |  |  |  |  |  |  |  | -0 |
| 76 | 4.2 | Monitoring and control stakeholder management |  | 132d | 2024-05-01 | 2024-10-31 |  |  |  |  | 0d |  |  |  |  | -0 |
| 77 | 4.3 | Monitoring and control project scope |  | 132d | 2024-05-01 | 2024-10-31 |  |  |  |  | 0d |  |  |  |  | -0 |
| 78 | 4.4 | Monitoring and control project schedules |  | 132d | 2024-05-01 | 2024-10-31 |  |  |  |  | 0d |  |  |  |  | -0 |
| 79 | 4.5 | Monitoring and control project cost |  | 132d | 2024-05-01 | 2024-10-31 |  |  |  |  | 0d |  |  |  |  | -0 |
| 80 | 4.6 | Monitoring and control project quality |  | 132d | 2024-05-01 | 2024-10-31 |  |  |  |  | 0d |  |  |  |  | -0 |
| 81 | 4.7 | Monitoring and control project risk |  | 132d | 2024-05-01 | 2024-10-31 |  |  |  |  | 0d |  |  |  |  | -0 |
| 82 | 4.8 | Monitoring and control project communication |  | 132d | 2024-05-01 | 2024-10-31 |  |  |  |  | 0d |  |  |  |  | -0 |
| 83 | 4.9 | Perform Integrated Change Control |  | 132d | 2024-05-01 | 2024-10-31 |  |  |  |  | 0d |  |  |  |  | -0 |

| ID | WBS | Task | Type | Duration | Start | Finish | Predecessors | Baseline start | Baseline finish | Baseline duration | Total slack | Free slack | Constraint | Resources | Work | Cost | Baseline cost |
| --- | --- | --- | --- | --- | --- | --- | --- | --- | --- | --- | --- | --- | --- | --- | --- | --- | --- |
| 84 | 4.10 | **Data Privacy** |  | 40d | 2024-05-23 | 2024-07-17 |  |  |  |  | 76d |  |  |  |  |  | -0 |
| 85 | 4.10.1 | Identify data privacy regulations |  | 10d | 2024-05-23 | 2024-06-05 | 37 |  |  |  | 76d | 0d |  |  |  |  | -0 |
| 86 | 4.10.2 | Comply data privacy regulations |  | 20d | 2024-06-06 | 2024-07-03 | 85 |  |  |  | 76d | 0d |  |  |  |  | -0 |
| 87 | 4.10.3 | Implement data privacy measurement |  | 10d | 2024-07-04 | 2024-07-17 | 86 |  |  |  | 76d |  |  |  |  |  | -0 |
| 88 | 4.11 | System performance and availability test |  | 103d | 2024-06-11 | 2024-10-31 | 44SS |  |  |  | 0d |  | finish no earlier than 2024-10-31 |  |  |  | -0 |
| 89 | 5 | **Closing** |  | 25d | 2024-09-13 | 2024-10-17 |  | 2024-09-13 | 2024-10-17 | 25d | 10d |  |  |  | 368h | 8,160 | 8,160 |
| 90 | 5.1 | **Project changes** |  | 15d | 2024-09-13 | 2024-10-03 |  | 2024-09-13 | 2024-10-03 | 15d | 14d | 0d |  |  | 160h | 4,000 | 4,000 |
| 91 | 5.1.1 | Collect stakeholder feedback |  | 5d | 2024-09-13 | 2024-09-19 | 44 | 2024-09-13 | 2024-09-19 | 5d | 14d | 0d |  | Alfreda; Ashok | 80h | 1,600 | 1,600 |
| 92 | 5.1.2 | System refinement |  | 10d | 2024-09-20 | 2024-10-03 | 91 | 2024-09-20 | 2024-10-03 | 10d | 14d |  |  | Bobby | 80h | 2,400 | 2,400 |
| 93 | 5.2 | Create final project report |  | 5d | 2024-10-04 | 2024-10-10 | 90 | 2024-10-04 | 2024-10-10 | 5d | 14d | 0d |  | Kim | 40h | 800 | 800 |
| 94 | 5.3 | **Project closure meeting** |  | 1d | 2024-10-11 | 2024-10-11 |  | 2024-10-11 | 2024-10-11 | 1d | 14d |  |  |  | 8h | 160 | 160 |
| 95 | 5.3.1 | Lesson Learned documentation | milestone | 1d | 2024-10-11 | 2024-10-11 | 93 | 2024-10-11 | 2024-10-11 | 1d | 14d |  |  | Kim | 8h | 160 | 160 |
| 96 | 5.4 | **Develop transition plan** |  | 15d | 2024-09-27 | 2024-10-17 |  | 2024-09-27 | 2024-10-17 | 15d | 10d |  |  |  | 160h | 3,200 | 3,200 |
| 97 | 5.4.1 | Collect data |  | 5d | 2024-09-27 | 2024-10-03 | 44 | 2024-09-27 | 2024-10-03 | 5d | 10d | 0d |  | Ashok; Alfreda | 80h | 1,600 | 1,600 |
| 98 | 5.4.2 | Create business plan |  | 10d | 2024-10-04 | 2024-10-17 | 97 | 2024-10-04 | 2024-10-17 | 10d | 10d |  |  | Ashok | 80h | 1,600 | 1,600 |
